# InstallProjectServer2013

Schedule from MS Project, 2018-10-22 to 2018-12-14, A marks actual dates.

## Calendars

- Standard: Mon-Fri 08:00-12:00, 13:00-17:00; Sat-Sun off.

## Resources

| Resource |
| --- |
| 张志安 |
| 杨彩虹 |
| 丁龄勃 |
| 熊鹰 |
| 曾史强 |
| 莫敏兰 |
| 胡政 |
| 李平 |
| 常增勇 |
| 苏元旦 |
| 吕赉 |

## Schedule

| ID | WBS | Task | Type | Duration | Start | Finish | Complete | Remaining | Total slack | Constraint | Resources | Work | Actual work |
| --- | --- | --- | --- | --- | --- | --- | --- | --- | --- | --- | --- | --- | --- |
| 1 | 1 | **SAAS 项目开发计划书** |  | 40d? | 2018-10-22 A | 2018-12-14 | 19% | 32.29d? | 0d |  |  | 2016h | 572h |
| 2 | 1.1 | **需求分析** |  | 8d | 2018-10-22 A | 2018-10-31 | 90% | 0.8d | 0d |  | 胡政; 苏元旦 | 256h | 230.4h |
| 3 | 1.1.1 | 原型设计 | manual | 8d | 2018-10-22 A | 2018-10-31 | 90% | 0.8d |  |  | 胡政; 苏元旦 | 128h | 115.2h |
| 4 | 1.2 | **PC端开发** |  | 5d? | 2018-10-29 A | 2018-11-02 | 7% | 4.64d? | 30d |  |  | 680h | 80h |
| 5 | 1.2.1 | **首页** |  | 5d | 2018-10-29 | 2018-11-02 |  |  | 30d |  | 丁龄勃 | 80h |  |
| 6 | 1.2.1.1 | 消息提醒 |  | 5d | 2018-10-29 | 2018-11-02 |  |  | 30d | start no earlier than 2018-10-29 | 丁龄勃 | 40h |  |
| 7 | 1.2.2 | **客户** |  | 5d | 2018-10-29 A | 2018-11-02 A | 100% |  |  |  | 丁龄勃 | 80h | 80h |
| 8 | 1.2.2.1 | 功能结构调整，链接完善 |  | 5d | 2018-10-29 A | 2018-11-02 A | 100% |  |  | start no earlier than 2018-10-29 | 丁龄勃 | 40h | 40h |
| 9 | 1.2.3 | **报表** |  | 5d? | 2018-10-29 | 2018-11-02 |  |  | 30d |  | 丁龄勃 | 520h |  |
| 10 | 1.2.3.1 | 采购报表功能结构调整 |  | 5d | 2018-10-29 | 2018-11-02 |  |  | 30d | finish no earlier than 2018-11-02 | 丁龄勃 | 40h |  |
| 11 | 1.2.3.2 | 库存报表功能结构调整 |  | 5d | 2018-10-29 | 2018-11-02 |  |  | 30d | finish no earlier than 2018-11-02 | 丁龄勃 | 40h |  |
| 12 | 1.2.3.3 | 营业报表-综合开单查询 |  | 5d | 2018-10-29 | 2018-11-02 |  |  | 30d | finish no earlier than 2018-11-02 | 熊鹰 | 40h |  |
| 13 | 1.2.3.4 | 营业报表-洗车开单查询 |  | 5d | 2018-10-29 | 2018-11-02 |  |  | 30d | finish no earlier than 2018-11-02 | 熊鹰 | 40h |  |
| 14 | 1.2.3.5 | 营业报表-理赔开单查询 |  | 5d | 2018-10-29 | 2018-11-02 |  |  | 30d | finish no earlier than 2018-11-02 | 熊鹰 | 40h |  |
| 15 | 1.2.3.6 | 营业报表-保险开单查询 |  | 5d | 2018-10-29 | 2018-11-02 |  |  | 30d | finish no earlier than 2018-11-02 | 曾史强 | 40h |  |
| 16 | 1.2.3.7 | 营业报表-销售开单查询 |  | 5d | 2018-10-29 | 2018-11-02 |  |  | 30d | finish no earlier than 2018-11-02 | 曾史强 | 40h |  |
| 17 | 1.2.3.8 | 营业报表-退货开单查询 |  | 5d | 2018-10-29 | 2018-11-02 |  |  | 30d | finish no earlier than 2018-11-02 | 曾史强 | 40h |  |
| 18 | 1.2.3.9 | 营业报表-营业明细查询 |  | 5d? | 2018-10-29 | 2018-11-02 |  |  | 30d | finish no earlier than 2018-11-02 | 莫敏兰 | 40h |  |
| 19 | 1.2.3.10 | 营业报表-维修顾问业绩报表 |  | 5d? | 2018-10-29 | 2018-11-02 |  |  | 30d | finish no earlier than 2018-11-02 | 莫敏兰 | 40h |  |
| 20 | 1.2.3.11 | 营业报表-维修班组业绩报表 |  | 5d? | 2018-10-29 | 2018-11-02 |  |  | 30d | finish no earlier than 2018-11-02 | 莫敏兰 | 40h |  |
| 21 | 1.2.3.12 | 营业报表-维修顾问排行 |  | 5d? | 2018-10-29 | 2018-11-02 |  |  | 30d | finish no earlier than 2018-11-02 | 莫敏兰 | 40h |  |
| 22 | 1.3 | **前端开发** |  | 28d | 2018-10-24 A | 2018-11-30 | 33% | 18.67d | 0d |  |  | 672h | 236h |
| 23 | 1.3.1 | **前端框架** |  | 1d | 2018-10-24 A | 2018-10-24 A | 100% |  |  |  | 李平 | 16h | 16h |
| 24 | 1.3.1.1 | 前端框架搭建 | manual | 1d | 2018-10-24 A | 2018-10-24 A | 100% |  |  |  | 李平 | 8h | 8h |

| ID | WBS | Task | Type | Duration | Start | Finish | Complete | Remaining | Total slack | Resources | Work | Actual work |
| --- | --- | --- | --- | --- | --- | --- | --- | --- | --- | --- | --- | --- |
| 25 | 1.3.2 | **样式/图片/公共组件** |  | 5d | 2018-10-25 A | 2018-10-31 A | 100% |  |  | 李平 | 160h | 160h |
| 26 | 1.3.2.1 | 样式 | manual | 5d | 2018-10-25 A | 2018-10-31 A | 100% |  |  | 李平 | 40h | 40h |
| 27 | 1.3.2.2 | 图片 | manual | 5d | 2018-10-25 A | 2018-10-31 A | 100% |  |  | 李平 | 40h | 40h |
| 28 | 1.3.2.3 | 公共组件 | manual | 5d | 2018-10-25 A | 2018-10-31 A | 100% |  |  | 李平 | 40h | 40h |
| 29 | 1.3.3 | **首页** |  | 24d | 2018-10-30 A | 2018-11-30 | 13% | 21d | 0d | 常增勇 | 352h | 44h |
| 30 | 1.3.3.1 | 首页 | manual | 1d | 2018-10-30 A | 2018-10-30 A | 100% |  |  | 常增勇 | 8h | 8h |
| 31 | 1.3.3.2 | 扫一扫 | manual | 4d | 2018-10-31 A | 2018-11-03 A | 100% |  |  | 常增勇 | 32h | 32h |
| 32 | 1.3.3.3 | 卡券 | manual | 1d | 2018-11-05 | 2018-11-05 |  |  |  | 常增勇 | 8h |  |
| 33 | 1.3.3.4 | 预约 | manual | 3d | 2018-11-06 | 2018-11-08 |  |  |  | 常增勇 | 24h |  |
| 34 | 1.3.3.5 | 闪电开单 | manual | 1d | 2018-11-12 | 2018-11-12 |  |  |  | 常增勇 | 8h |  |
| 35 | 1.3.3.6 | 在报价 | manual | 4d | 2018-11-12 | 2018-11-15 |  |  |  | 常增勇 | 32h |  |
| 36 | 1.3.3.7 | 待施工 | manual | 2d | 2018-11-16 | 2018-11-18 |  |  |  | 常增勇 | 16h |  |
| 37 | 1.3.3.8 | 待完工 | manual | 2d | 2018-11-19 | 2018-11-20 |  |  |  | 常增勇 | 16h |  |
| 38 | 1.3.3.9 | 待结算 | manual | 2d | 2018-11-21 | 2018-11-22 |  |  |  | 常增勇 | 16h |  |
| 39 | 1.3.3.10 | 工单管理 | manual | 2d | 2018-11-21 | 2018-11-22 |  |  |  | 常增勇 | 16h |  |
| 40 | 1.3.3.11 | 接车单 | manual | 2d | 2018-11-23 | 2018-11-24 |  |  |  | 常增勇 | 16h |  |
| 41 | 1.3.3.12 | 报价单 | manual | 1d | 2018-11-26 | 2018-11-26 |  |  |  | 常增勇 | 8h |  |
| 42 | 1.3.3.13 | 洗车开单 | manual | 2d | 2018-11-27 | 2018-11-28 |  |  |  | 常增勇 | 16h |  |
| 43 | 1.3.3.14 | 综合开单 | manual | 2d | 2018-11-29 | 2018-11-30 |  |  |  | 常增勇 | 16h |  |
| 44 | 1.3.3.15 | 销售开单 | manual | 6d | 2018-11-12 | 2018-11-19 |  |  |  | 李平 | 48h |  |
| 45 | 1.3.3.16 | 理赔开单 | manual | 2d | 2018-11-20 | 2018-11-21 |  |  |  | 李平 | 16h |  |
| 46 | 1.3.3.17 | 查车开单 | manual | 2d | 2018-11-23 | 2018-11-24 |  |  |  | 李平 | 16h |  |
| 47 | 1.3.3.18 | 预检开单 | manual | 1d | 2018-11-26 | 2018-11-26 |  |  |  | 李平 | 8h |  |
| 48 | 1.3.4 | **信息** |  | 1d | 2018-11-30 | 2018-11-30 |  |  | 0d | 李平 | 24h |  |
| 49 | 1.3.4.1 | 提醒中心 | manual | 1d | 2018-11-30 | 2018-11-30 |  |  |  | 李平 | 8h |  |
| 50 | 1.3.4.2 | 工单查询 | manual | 1d | 2018-11-30 | 2018-11-30 |  |  |  | 李平 | 8h |  |

| ID | WBS | Task | Type | Duration | Start | Finish | Complete | Remaining | Total slack | Constraint | Resources | Work | Actual work |
| --- | --- | --- | --- | --- | --- | --- | --- | --- | --- | --- | --- | --- | --- |
| 51 | 1.3.5 | **我的** |  | 7d | 2018-11-06 | 2018-11-14 |  |  | 0d |  | 李平 | 104h |  |
| 52 | 1.3.5.1 | 我的-我的资料 | manual | 2d | 2018-11-06 | 2018-11-07 |  |  |  |  | 李平 | 16h |  |
| 53 | 1.3.5.2 | 我的-联系我们 | manual | 2d | 2018-11-07 | 2018-11-08 |  |  |  |  | 李平 | 16h |  |
| 54 | 1.3.5.3 | 我的-参数设置 | manual | 2d | 2018-11-09 | 2018-11-10 |  |  |  |  | 李平 | 16h |  |
| 55 | 1.3.5.4 | 我的-帮助指导说明 | manual | 1d | 2018-11-12 | 2018-11-12 |  |  |  |  | 李平 | 8h |  |
| 56 | 1.3.5.5 | 我的-意见反馈 | manual | 1d | 2018-11-12 | 2018-11-12 |  |  |  |  | 李平 | 8h |  |
| 57 | 1.3.5.6 | 我的-设置 | manual | 1d | 2018-11-14 | 2018-11-14 |  |  |  |  | 李平 | 8h |  |
| 58 | 1.3.6 | 登录 |  | 1d | 2018-10-30 A | 2018-10-30 A | 100% |  |  |  | 李平 | 8h | 8h |
| 59 | 1.3.7 | 注册 | manual | 1d | 2018-10-31 A | 2018-10-31 A | 100% |  |  |  | 李平 | 8h | 8h |
| 60 | 1.4 | **联调** |  | 7d? | 2018-11-14 | 2018-11-22 |  |  | 0d |  | 丁龄勃 | 208h |  |
| 61 | 1.4.1 | 首页 | manual | 5d | 2018-11-14 | 2018-11-20 |  |  |  |  | 丁龄勃 | 40h |  |
| 62 | 1.4.2 | 信息 | manual | 2d | 2018-11-21 | 2018-11-22 |  |  |  |  | 丁龄勃 | 16h |  |
| 63 | 1.4.3 | 我的 | manual | 2d | 2018-11-21 | 2018-11-22 |  |  |  |  | 丁龄勃 | 16h |  |
| 64 | 1.4.4 | 登录 | manual | 5d | 2018-11-14 | 2018-11-20 |  |  |  |  | 丁龄勃 | 40h |  |
| 65 | 1.4.5 | 注册 | manual | 5d | 2018-11-14 | 2018-11-20 |  |  |  |  | 丁龄勃 | 40h |  |
| 66 | 1.5 | **测试** |  | 8d | 2018-11-21 A | 2018-11-30 | 20% | 6.4d | 10d |  | 丁龄勃 | 128h | 25.6h |
| 67 | 1.5.1 | 集成测试 |  | 8d | 2018-11-21 A | 2018-11-30 | 20% | 6.4d | 10d | finish no earlier than 2018-11-30 | 丁龄勃 | 64h | 12.8h |
| 68 | 1.6 | **发布** |  | 7d | 2018-11-30 | 2018-12-10 |  |  |  |  |  | 24h |  |
| 69 | 1.6.1 | 环境部署 |  | 3d | 2018-11-30 | 2018-12-04 |  |  | 8d | start no earlier than 2018-11-30 |  |  |  |
| 70 | 1.6.2 | 发布 | manual | 3d | 2018-12-06 | 2018-12-10 |  |  |  |  | 吕赉 | 24h |  |
| 71 | 1.6.3 | 培训宣导 | manual | 5d | 2018-11-30 | 2018-12-06 |  |  |  |  |  |  |  |
| 72 | 1.7 | **验收** |  | 2d | 2018-12-11 | 2018-12-12 |  |  |  |  | 吕赉 | 16h |  |
| 73 | 1.7.1 | 项目验收 |  | 2d | 2018-12-11 | 2018-12-12 |  |  | 2d | start no earlier than 2018-12-11 |  |  |  |
| 74 | 1.8 | **总结&复盘** |  | 2d | 2018-12-13 | 2018-12-14 |  |  |  |  | 吕赉 | 16h |  |
| 75 | 1.8.1 | 项目总结会议 |  | 2d | 2018-12-13 | 2018-12-14 |  |  | 0d | start no earlier than 2018-12-13 |  |  |  |

| ID | WBS | Task | Duration | Start | Finish | Total slack | Constraint | Resources | Work |
| --- | --- | --- | --- | --- | --- | --- | --- | --- | --- |
| 76 | 1.9 | **归档** | 2d | 2018-12-13 | 2018-12-14 |  |  | 吕赉 | 16h |
| 77 | 1.9.1 | 项目文档归档 | 2d | 2018-12-13 | 2018-12-14 | 0d | start no earlier than 2018-12-13 |  |  |
